# 安徽省质检院综合业务系统总体计划9-11

How a schedule from MS Project changed from version to version. A marks actual dates.

## Version 1 (saved 2015-09-28, file (第1周)安徽省质检院综合业务系统总体计划.mpp)

Note of the change: test

| ID | WBS | Task | Duration | Start | Finish | Predecessors | Complete | Total float | Constraint |
| --- | --- | --- | --- | --- | --- | --- | --- | --- | --- |
| 1 | 1 | **安徽省质检院综合业务系统总体计划** | 145d | 2015-09-14 A | 2016-03-31 |  | 5% |  |  |
| 2 | 1.1 | **需求调研** | 14d | 2015-09-14 A | 2015-09-30 |  | 15% |  |  |
| 3 |  | 流程调研 | 3d | 2015-09-14 A | 2015-09-16 |  | 10% | 11d |  |
| 4 |  | 功能细节调研 | 3d | 2015-09-14 A | 2015-09-16 |  | 10% | 11d |  |
| 5 | 1.1.3 | **基础信息资料准备** | 14d | 2015-09-14 | 2015-09-30 |  | 16% |  |  |
| 6 |  | 角色设置信息 | 2d | 2015-09-29 A | 2015-09-30 |  | 10% | 131d | finish no earlier than 2015-09-30 |
| 7 |  | 权限设置信息 | 2d | 2015-09-29 | 2015-09-30 |  |  | 108d | finish no earlier than 2015-09-30 |
| 8 |  | 字典设置信息 | 3d | 2015-09-28 A | 2015-09-30 |  | 20% | 131d | finish no earlier than 2015-09-30 |
| 9 |  | 人员基本信息 | 1d | 2015-09-29 A | 2015-09-29 A |  | 100% |  | start no earlier than 2015-09-29 |
| 10 |  | 组织架构信息 | 1d | 2015-09-28 A | 2015-09-28 A |  | 100% |  | start no earlier than 2015-09-28 |
| 11 |  | 检验标准信息 | 9d | 2015-09-16 A | 2015-09-25 |  | 10% | 134d | finish no earlier than 2015-09-25 |
| 12 |  | 检验收费标准信息 | 3d | 2015-09-22 A | 2015-09-24 |  | 10% | 135d | finish no earlier than 2015-09-24 |
| 13 |  | 设备信息 | 2d | 2015-09-25 | 2015-09-28 |  |  | 110d | finish no earlier than 2015-09-28 |
| 14 |  | 客户信息 | 1d | 2015-09-29 | 2015-09-29 |  |  | 109d | start no earlier than 2015-09-29 |
| 15 |  | 认证产品信息 | 1d | 2015-09-30 | 2015-09-30 |  |  | 108d | start no earlier than 2015-09-30 |
| 16 | 1.2 | **硬件采购** | 25d | 2015-09-21 | 2015-10-23 |  |  |  |  |
| 17 |  | 硬件采购 | 15d | 2015-09-21 | 2015-10-09 |  |  | 10d |  |
| 18 | 1.2.2 | **硬件上架** | 10d | 2015-10-12 | 2015-10-23 |  |  |  |  |
| 19 |  | 系统安装 | 3d | 2015-10-19 | 2015-10-21 |  |  | 57d | finish no earlier than 2015-10-21 |
| 20 | 1.2.3 | **测试环境搭建** | 3d | 2015-10-21 | 2015-10-23 |  |  |  |  |
| 21 |  | 虚拟服务器安装 | 2d | 2015-10-21 | 2015-10-22 |  |  | 91d | finish no earlier than 2015-10-22 |
| 22 |  | Oracle数据库安装（安装/备份设置） | 1d | 2015-10-23 | 2015-10-23 | 21 |  | 114d | finish no earlier than 2015-10-23 |
| 23 | 1.3 | **系统开发** | 122d | 2015-09-14 A | 2016-02-29 |  | 5% |  |  |
| 24 | 1.3.1 | **功能实现阶段** | 122d | 2015-09-14 A | 2016-02-29 |  | 5% |  |  |
| 25 | 1.3.1.1 | **功能实现/编码第一阶段** | 14d | 2015-09-14 A | 2015-09-30 |  | 53% |  |  |
| 26 | 1.3.1.1.1 | **框架搭建,设计** | 14d | 2015-09-14 A | 2015-09-30 |  | 53% |  |  |
| 27 |  | 数据库设计 | 5d | 2015-09-14 A | 2015-09-18 A |  | 100% |  | finish no earlier than 2015-09-18 |
| 28 |  | 框架搭建 | 9d | 2015-09-14 A | 2015-09-23 A |  | 100% |  | finish no earlier than 2015-09-23 |
| 29 | 1.3.1.1.1.3 | **系统设计** | 9d | 2015-09-14 A | 2015-09-23 |  | 10% |  |  |
| 30 |  | 综合业务管理系统设计 | 5d | 2015-09-14 A | 2015-09-18 |  | 30% | 140d | finish no earlier than 2015-09-18 |
| 31 |  | 微信平台设计 | 5d | 2015-09-16 | 2015-09-21 |  |  | 115d | finish no earlier than 2015-09-21 |
| 32 |  | 质检门户设计 | 5d | 2015-09-18 | 2015-09-23 |  |  | 113d | finish no earlier than 2015-09-23 |
| 33 | 1.3.1.2 | **项目界面设计** | 52d | 2015-09-14 | 2015-11-23 |  |  |  |  |
| 34 | 1.3.1.2.1 | **综合业务管理系统界面设计** | 14d | 2015-09-14 | 2015-09-30 |  |  |  |  |
| 35 | 1.3.1.2.1.1 | **系统主页界面设计** | 2d | 2015-09-14 | 2015-09-15 |  |  |  |  |
| 36 |  | 系统主页设置界面设计 | 1d | 2015-09-15 | 2015-09-15 |  |  | 120d | start no earlier than 2015-09-15 |
| 37 | 1.3.1.2.1.2 | **系统八大功能界面设计** | 11d | 2015-09-14 | 2015-09-25 |  |  |  |  |
| 38 |  | 任务管理界面 | 2d | 2015-09-14 | 2015-09-15 |  |  | 120d | start no earlier than 2015-09-14 |
| 39 |  | 业务中心界面 | 2d | 2015-09-16 | 2015-09-17 |  |  | 118d | finish no earlier than 2015-09-17 |
| 40 |  | 辅助业务界面 | 2d | 2015-09-17 | 2015-09-18 |  |  | 117d | finish no earlier than 2015-09-18 |
| 41 |  | 客户管理界面 | 2d | 2015-09-21 | 2015-09-22 |  |  | 114d | finish no earlier than 2015-09-22 |
| 42 |  | 科研管理界面 | 2d | 2015-09-22 | 2015-09-23 |  |  | 113d | finish no earlier than 2015-09-23 |
| 43 |  | 费用管理界面 | 2d | 2015-09-23 | 2015-09-24 |  |  | 112d | finish no earlier than 2015-09-24 |
| 44 |  | 数据统计界面 | 3d | 2015-09-23 | 2015-09-25 |  |  | 111d | finish no earlier than 2015-09-25 |
| 45 |  | 系统管理界面 | 2d | 2015-09-24 | 2015-09-25 |  |  | 111d | finish no earlier than 2015-09-25 |
| 46 |  | 评审代码 | 1d | 2015-09-14 | 2015-09-14 |  |  | 13d |  |
| 47 |  | 单元测试 | 1d | 2015-09-14 | 2015-09-14 |  |  | 13d |  |
| 48 | 1.3.1.2.2 | **微信平台界面设计** | 15d | 2015-10-12 | 2015-10-30 |  |  |  |  |
| 49 |  | 欢迎页面界面设计 | 1d | 2015-10-12 | 2015-10-12 |  |  | 14d |  |
| 50 | 1.3.1.2.2.2 | **微主页界面设计** | 4d | 2015-10-13 | 2015-10-16 |  |  |  |  |
| 51 |  | 简介 | 1d | 2015-10-13 | 2015-10-13 |  |  | 3d |  |
| 52 |  | 组织架构 | 1d | 2015-10-13 | 2015-10-13 |  |  | 3d |  |
| 53 |  | 发展历程 | 1d | 2015-10-13 | 2015-10-13 |  |  | 3d |  |
| 54 |  | 质检新闻 | 2d | 2015-10-13 | 2015-10-14 |  |  | 2d |  |
| 55 |  | 办事流程 | 1d | 2015-10-13 | 2015-10-13 |  |  | 3d |  |
| 56 |  | 检验标准 | 1d | 2015-10-13 | 2015-10-13 |  |  | 3d |  |
| 57 |  | 质量馆 | 1d | 2015-10-13 | 2015-10-13 |  |  | 3d |  |
| 58 |  | 品牌馆 | 1d | 2015-10-13 | 2015-10-13 |  |  | 3d |  |
| 59 |  | 联系我们 | 1d | 2015-10-16 | 2015-10-16 |  |  | 60d | start no earlier than 2015-10-16 |
| 60 | 1.3.1.2.2.3 | **微服务界面设计** | 5d | 2015-10-19 | 2015-10-23 |  |  |  |  |
| 61 |  | 扫一扫界面设计 | 1d | 2015-10-19 | 2015-10-19 |  |  | 4d |  |
| 62 |  | 样品信息 | 1d | 2015-10-19 | 2015-10-19 |  |  | 4d |  |
| 63 |  | 设备信息 | 1d | 2015-10-19 | 2015-10-19 |  |  | 4d |  |
| 64 |  | 报告信息 | 1d | 2015-10-19 | 2015-10-19 |  |  | 4d |  |
| 65 |  | 数据统计 | 3d | 2015-10-21 | 2015-10-23 |  |  | 55d | finish no earlier than 2015-10-23 |
| 66 | 1.3.1.2.2.4 | **微管理界面设计** | 5d | 2015-10-26 | 2015-10-30 |  |  |  |  |
| 67 | 1.3.1.2.2.4.1 | **我的任务** | 2d | 2015-10-26 | 2015-10-27 |  |  |  |  |
| 68 |  | 任务详情 | 1d | 2015-10-26 | 2015-10-26 |  |  | 1d |  |
| 69 | 1.3.1.2.2.4.2 | **我的申请** | 1d | 2015-10-26 | 2015-10-26 |  |  | 4d |  |
| 70 |  | 申请页面 | 1d | 2015-10-26 | 2015-10-26 |  |  | 4d |  |

| ID | WBS | Task | Duration | Start | Finish | Predecessors | Complete | Total float | Constraint |
| --- | --- | --- | --- | --- | --- | --- | --- | --- | --- |
| 71 |  | 审核页面 | 1d | 2015-10-26 | 2015-10-26 |  |  | 4d |  |
| 72 | 1.3.1.2.2.4.3 | **工作汇报** | 5d | 2015-10-26 | 2015-10-30 |  |  | 0d |  |
| 73 |  | 汇报页面 | 1d | 2015-10-26 | 2015-10-26 |  |  | 4d |  |
| 74 |  | 汇报查看页面 | 1d | 2015-10-30 | 2015-10-30 |  |  | 0d | start no earlier than 2015-10-30 |
| 75 |  | 微信后台界面设计 | 1d | 2015-10-12 | 2015-10-12 |  |  | 14d |  |
| 76 | 1.3.1.2.3 | **质检门户界面设计** | 10d | 2015-11-02 | 2015-11-13 |  |  |  |  |
| 77 |  | 欢迎页面界面设计 | 1d | 2015-11-02 | 2015-11-02 |  |  | 9d |  |
| 78 | 1.3.1.2.3.2 | **质检门户各功能子界面设计** | 9d | 2015-11-03 | 2015-11-13 |  |  |  |  |
| 79 |  | 机构概况 | 1d | 2015-11-03 | 2015-11-03 |  |  | 8d |  |
| 80 |  | 通知公告 | 1d | 2015-11-03 | 2015-11-03 |  |  | 8d |  |
| 81 |  | 政策法规 | 1d | 2015-11-04 | 2015-11-04 |  |  | 47d | start no earlier than 2015-11-04 |
| 82 |  | 网上服务 | 1d | 2015-11-04 | 2015-11-04 |  |  | 47d | start no earlier than 2015-11-04 |
| 83 |  | 检验服务 | 1d | 2015-11-05 | 2015-11-05 |  |  | 46d | start no earlier than 2015-11-05 |
| 84 |  | 客户专区 | 1d | 2015-11-05 | 2015-11-05 |  |  | 46d | start no earlier than 2015-11-05 |
| 85 |  | 投诉与建议 | 1d | 2015-11-06 | 2015-11-06 |  |  | 45d | start no earlier than 2015-11-06 |
| 86 |  | 友情链接 | 1d | 2015-11-06 | 2015-11-06 |  |  | 45d | start no earlier than 2015-11-06 |
| 87 | 1.3.1.2.3.2.9 | **网上检验大厅界面设计** | 5d | 2015-11-09 | 2015-11-13 |  |  |  |  |
| 88 |  | 网上检验大厅在线申请界面设计 | 2d | 2015-11-09 | 2015-11-10 |  |  | 43d | finish no earlier than 2015-11-10 |
| 89 |  | 网上检验查询界面 | 1d | 2015-11-11 | 2015-11-11 |  |  |  |  |
| 90 |  | 报告(查询、预览、下载)界面 | 2d | 2015-11-12 | 2015-11-13 |  |  | 40d | start no earlier than 2015-11-12 |
| 91 |  | 检验结果公示页面界面设计 | 2d | 2015-11-12 | 2015-11-13 |  |  | 40d | finish no earlier than 2015-11-13 |
| 92 | 1.3.1.3 | **业务系统功能开发** | 51d | 2015-09-14 A | 2015-11-20 |  | 3% |  |  |
| 93 |  | 系统首页开发 | 1d | 2015-09-14 | 2015-09-14 |  |  | 50d |  |
| 94 | 1.3.1.3.2 | **样品管理开发** | 4d | 2015-09-14 A | 2015-09-17 |  | 21% |  |  |
| 95 |  | 样品信息（增删改查） | 1d | 2015-09-14 A | 2015-09-14 |  | 40% | 2d | finish no earlier than 2015-09-14 |
| 96 |  | 样品二维码生成 | 1d | 2015-09-14 | 2015-09-14 |  |  |  |  |
| 97 |  | 样品信息（导入导出） | 1d | 2015-09-15 | 2015-09-15 | 95 |  | 2d |  |
| 98 |  | 样品登记复核 | 1d | 2015-09-15 | 2015-09-15 |  |  | 84d | start no earlier than 2015-09-15 |
| 99 |  | 样品登记审核 | 1d | 2015-09-16 | 2015-09-16 |  |  | 83d | start no earlier than 2015-09-16 |
| 100 | 1.3.1.3.2.6 | **样品领用** | 1d | 2015-09-14 A | 2015-09-14 |  | 40% | 3d |  |
| 101 |  | 领用审核 | 1d | 2015-09-14 A | 2015-09-14 |  | 40% | 3d |  |
| 102 | 1.3.1.3.2.7 | **样品归还** | 1d | 2015-09-14 A | 2015-09-14 |  | 40% | 3d |  |
| 103 |  | 归还审核 | 1d | 2015-09-14 A | 2015-09-14 |  | 40% | 3d |  |
| 104 | 1.3.1.3.2.8 | **样品退样** | 1d | 2015-09-14 A | 2015-09-14 |  | 40% | 3d |  |
| 105 |  | 退样审核 | 1d | 2015-09-14 A | 2015-09-14 |  | 40% | 3d |  |
| 106 | 1.3.1.3.2.9 | **预检方案** | 2d | 2015-09-14 A | 2015-09-15 |  | 25% | 2d |  |
| 107 |  | 预检方案（增删改查） | 2d | 2015-09-14 A | 2015-09-15 |  | 30% | 2d |  |
| 108 |  | 预检方案(导入导出) | 1d | 2015-09-15 A | 2015-09-15 |  | 15% | 2d | start no earlier than 2015-09-15 |
| 109 | 1.3.1.3.3 | **检验管理开发** | 6d | 2015-09-18 | 2015-09-24 |  |  |  |  |
| 110 | 1.3.1.3.3.1 | **样品检验** | 4d | 2015-09-18 | 2015-09-22 |  |  |  |  |
| 111 |  | 样品详情 | 1d | 2015-09-18 | 2015-09-18 |  |  | 3d |  |
| 112 |  | 检验项目（增删改） | 1d | 2015-09-18 | 2015-09-18 |  |  | 3d |  |
| 113 |  | 设备信息（增删改） | 1d | 2015-09-18 | 2015-09-18 |  |  | 81d | start no earlier than 2015-09-18 |
| 114 |  | 检验判定增加 | 1d | 2015-09-18 | 2015-09-18 |  |  | 3d |  |
| 115 |  | 检验原始记录上传 | 1d | 2015-09-18 | 2015-09-18 |  |  | 3d |  |
| 116 | 1.3.1.3.3.2 | **检验复核** | 1d | 2015-09-18 | 2015-09-18 |  |  | 0d |  |
| 117 |  | 退回 | 1d | 2015-09-18 | 2015-09-18 |  |  |  |  |
| 118 | 1.3.1.3.3.3 | **检验审核** | 1d | 2015-09-18 | 2015-09-18 |  |  | 0d |  |
| 119 |  | 退回 | 1d | 2015-09-18 | 2015-09-18 |  |  |  |  |
| 120 | 1.3.1.3.3.4 | **检验退检** | 1d | 2015-09-18 | 2015-09-18 |  |  | 5d |  |
| 121 |  | 退检审核 | 1d | 2015-09-18 | 2015-09-18 |  |  | 5d |  |
| 122 |  | 评审代码 | 1d | 2015-09-22 | 2015-09-22 |  |  |  |  |
| 123 |  | 单元测试 | 2d | 2015-09-23 | 2015-09-24 |  |  |  |  |
| 124 | 1.3.1.3.6 | **检验报告编制** | 6d | 2015-09-25 | 2015-10-02 | 109 |  |  |  |
| 125 | 1.3.1.3.6.1 | **报告编制** | 2d | 2015-09-25 | 2015-09-28 |  |  |  |  |
| 126 |  | 编制报告 | 2d | 2015-09-25 | 2015-09-28 |  |  | 0d |  |
| 127 |  | 报告二维码生成 | 1d | 2015-09-25 | 2015-09-25 |  |  |  |  |
| 128 |  | 报告预览 | 1d | 2015-09-28 | 2015-09-28 |  |  | 74d | start no earlier than 2015-09-28 |
| 129 | 1.3.1.3.6.2 | **报告复核** | 1d | 2015-09-29 | 2015-09-29 | 125 |  |  |  |
| 130 |  | 退回 | 1d | 2015-09-29 | 2015-09-29 |  |  | 0d |  |
| 131 |  | 报告预览 | 1d | 2015-09-29 | 2015-09-29 |  |  | 73d | start no earlier than 2015-09-29 |
| 132 | 1.3.1.3.6.3 | **报告审核** | 1d | 2015-09-29 | 2015-09-29 | 129 |  |  |  |
| 133 |  | 退回 | 1d | 2015-09-29 | 2015-09-29 |  |  | 0d |  |
| 134 |  | 报告预览 | 1d | 2015-09-29 | 2015-09-29 |  |  | 73d | start no earlier than 2015-09-29 |
| 135 | 1.3.1.3.6.4 | **报告批准** | 1d | 2015-09-30 | 2015-09-30 | 132 |  |  |  |
| 136 |  | 退回 | 1d | 2015-09-30 | 2015-09-30 |  |  | 0d |  |
| 137 |  | 报告预览 | 1d | 2015-09-30 | 2015-09-30 |  |  | 72d | start no earlier than 2015-09-30 |
| 138 | 1.3.1.3.6.5 | **报告发放** | 1d | 2015-09-30 | 2015-09-30 | 135 |  |  |  |
| 139 |  | 报告预览 | 1d | 2015-09-30 | 2015-09-30 |  |  | 72d | start no earlier than 2015-09-30 |
| 140 |  | 报告打印 | 1d | 2015-10-01 | 2015-10-01 | 138 |  | 0d | start no earlier than 2015-10-01 |

| ID | WBS | Task | Duration | Start | Finish | Predecessors | Total float | Constraint |
| --- | --- | --- | --- | --- | --- | --- | --- | --- |
| 141 |  | 报告归档 | 1d | 2015-10-01 | 2015-10-01 |  | 0d | start no earlier than 2015-10-01 |
| 142 |  | 报告解锁 | 2d | 2015-10-01 | 2015-10-02 |  | 70d | finish no earlier than 2015-10-02 |
| 143 |  | 退检报告（改、删、查） | 1d | 2015-10-02 | 2015-10-02 | 141 | 0d |  |
| 144 |  | 超期报告（改、删、查） | 1d | 2015-10-02 | 2015-10-02 | 140 | 0d |  |
| 145 |  | 评审代码 | 1d | 2015-10-05 | 2015-10-05 |  |  |  |
| 146 |  | 单元测试 | 2d | 2015-10-06 | 2015-10-07 |  |  |  |
| 147 | 1.3.1.3.9 | **任务管理开发** | 2d | 2015-09-16 | 2015-09-17 |  |  |  |
| 148 | 1.3.1.3.9.1 | **我的任务** | 1d | 2015-09-16 | 2015-09-16 |  |  |  |
| 149 |  | 任务处理(查、改) | 1d | 2015-09-16 | 2015-09-16 |  | 0d |  |
| 150 |  | 任务详情 | 1d | 2015-09-16 | 2015-09-16 |  | 0d |  |
| 151 |  | 任务延期（查、改） | 1d | 2015-09-16 | 2015-09-16 |  | 83d | start no earlier than 2015-09-16 |
| 152 | 1.3.1.3.9.2 | **任务下达（分配—指派）** | 1d | 2015-09-17 | 2015-09-17 |  |  |  |
| 153 |  | 任务分配（改、删、查） | 1d | 2015-09-17 | 2015-09-17 |  | 0d |  |
| 154 |  | 任务指派（改、删、查） | 1d | 2015-09-17 | 2015-09-17 |  | 82d | start no earlier than 2015-09-17 |
| 155 |  | 任务延期（改、删、查） | 1d | 2015-09-17 | 2015-09-17 |  | 82d | start no earlier than 2015-09-17 |
| 156 | 1.3.1.3.9.3 | **系统预警** | 2d | 2015-09-16 | 2015-09-17 |  |  |  |
| 157 |  | 任务预警提醒 | 1d | 2015-09-16 | 2015-09-16 |  | 1d |  |
| 158 |  | 任务详情 | 1d | 2015-09-16 | 2015-09-16 |  | 1d |  |
| 159 | 1.3.1.3.9.4 | **任务台** | 2d | 2015-09-16 | 2015-09-17 |  |  |  |
| 160 |  | 待办 | 1d | 2015-09-16 | 2015-09-16 |  | 1d |  |
| 161 |  | 已办 | 1d | 2015-09-16 | 2015-09-16 |  | 1d |  |
| 162 |  | 督办 | 1d | 2015-09-17 | 2015-09-17 |  | 82d | start no earlier than 2015-09-17 |
| 163 |  | 超期 | 1d | 2015-09-17 | 2015-09-17 |  | 82d | start no earlier than 2015-09-17 |
| 164 | 1.3.1.3.10 | **查询与统计开发** | 10d | 2015-11-09 | 2015-11-20 |  |  |  |
| 165 | 1.3.1.3.10.1 | **业务统计（查询、查看）** | 2d | 2015-11-09 | 2015-11-10 |  |  |  |
| 166 |  | 年检验量统计（打印） | 1d | 2015-11-09 | 2015-11-09 |  | 1d |  |
| 167 |  | 年检验量统计（导出） | 1d | 2015-11-09 | 2015-11-09 |  | 1d |  |
| 168 |  | 月检验量统计（打印） | 1d | 2015-11-09 | 2015-11-09 |  | 1d |  |
| 169 |  | 月检验量统计（导出） | 1d | 2015-11-09 | 2015-11-09 |  | 1d |  |
| 170 |  | 个人检验量统计（打印） | 1d | 2015-11-09 | 2015-11-09 |  | 1d |  |
| 171 |  | 个人检验量统计（导出） | 1d | 2015-11-09 | 2015-11-09 |  | 1d |  |
| 172 |  | 检验客户统计（打印） | 1d | 2015-11-09 | 2015-11-09 |  | 1d |  |
| 173 |  | 检验客户统计（导出） | 1d | 2015-11-09 | 2015-11-09 |  | 1d |  |
| 174 |  | 合格样品统计（打印） | 1d | 2015-11-09 | 2015-11-09 |  | 1d |  |
| 175 |  | 合格样品统计（导出） | 1d | 2015-11-09 | 2015-11-09 |  | 1d |  |
| 176 |  | 不合格样品统计（打印） | 1d | 2015-11-09 | 2015-11-09 |  | 1d |  |
| 177 |  | 不合格样品统计（导出） | 1d | 2015-11-09 | 2015-11-09 |  | 1d |  |
| 178 |  | 设备使用统计（打印） | 1d | 2015-11-09 | 2015-11-09 |  | 1d |  |
| 179 |  | 设备使用统计（导出） | 1d | 2015-11-09 | 2015-11-09 |  | 1d |  |
| 180 |  | 样品分类统计（打印） | 1d | 2015-11-09 | 2015-11-09 |  | 1d |  |
| 181 |  | 样品分类统计（导出） | 1d | 2015-11-09 | 2015-11-09 |  | 1d |  |
| 182 | 1.3.1.3.10.2 | **报告统计（查询、查看）** | 2d | 2015-11-11 | 2015-11-12 |  |  |  |
| 183 |  | 所有报告统计（打印） | 1d | 2015-11-11 | 2015-11-11 |  | 1d |  |
| 184 |  | 所有报告统计（导出） | 1d | 2015-11-11 | 2015-11-11 |  | 1d |  |
| 185 |  | 合格报告统计（打印） | 1d | 2015-11-11 | 2015-11-11 |  | 1d |  |
| 186 |  | 合格报告统计（导出） | 1d | 2015-11-11 | 2015-11-11 |  | 1d |  |
| 187 |  | 不合格报告统计（打印） | 1d | 2015-11-11 | 2015-11-11 |  | 1d |  |
| 188 |  | 不合格报告统计（导出） | 1d | 2015-11-11 | 2015-11-11 |  | 1d |  |
| 189 | 1.3.1.3.10.3 | **财务统计（查询、查看）** | 2d | 2015-11-13 | 2015-11-16 |  |  |  |
| 190 |  | 总体费用统计（打印） | 1d | 2015-11-13 | 2015-11-13 |  | 1d |  |
| 191 |  | 总体费用统计（导出） | 1d | 2015-11-13 | 2015-11-13 |  | 1d |  |
| 192 |  | 报告收费统计（打印） | 1d | 2015-11-13 | 2015-11-13 |  | 1d |  |
| 193 |  | 报告收费统计（导出） | 1d | 2015-11-13 | 2015-11-13 |  | 1d |  |
| 194 |  | 收入统计（打印） | 1d | 2015-11-13 | 2015-11-13 |  | 1d |  |
| 195 |  | 收入统计（导出） | 1d | 2015-11-13 | 2015-11-13 |  | 1d |  |
| 196 |  | 成本统计（打印） | 1d | 2015-11-13 | 2015-11-13 |  | 1d |  |
| 197 |  | 成本统计（导出） | 1d | 2015-11-13 | 2015-11-13 |  | 1d |  |
| 198 |  | 员工福利统计（打印） | 1d | 2015-11-13 | 2015-11-13 |  | 1d |  |
| 199 |  | 员工福利统计（导出） | 1d | 2015-11-13 | 2015-11-13 |  | 1d |  |
| 200 | 1.3.1.3.10.4 | **任务统计（查询、查看）** | 2d | 2015-11-17 | 2015-11-18 |  |  |  |
| 201 |  | 所有任务统计（打印） | 1d | 2015-11-17 | 2015-11-17 |  | 1d |  |
| 202 |  | 所有任务统计（导出） | 1d | 2015-11-17 | 2015-11-17 |  | 1d |  |
| 203 |  | 按时完成量统计（打印） | 1d | 2015-11-17 | 2015-11-17 |  | 1d |  |
| 204 |  | 按时完成量统计（导出） | 1d | 2015-11-17 | 2015-11-17 |  | 1d |  |
| 205 |  | 超期完成量统计（打印） | 1d | 2015-11-17 | 2015-11-17 |  | 1d |  |
| 206 |  | 超期完成量统计（导出） | 1d | 2015-11-17 | 2015-11-17 |  | 1d |  |
| 207 |  | 任务来源统计（打印） | 1d | 2015-11-17 | 2015-11-17 |  | 1d |  |
| 208 |  | 任务来源统计（导出） | 1d | 2015-11-17 | 2015-11-17 |  | 1d |  |
| 209 |  | 时效考核统计（打印） | 1d | 2015-11-17 | 2015-11-17 |  | 1d |  |
| 210 |  | 时效考核统计（导出） | 1d | 2015-11-17 | 2015-11-17 |  | 1d |  |

| ID | WBS | Task | Duration | Start | Finish | Predecessors | Complete | Total float | Constraint |
| --- | --- | --- | --- | --- | --- | --- | --- | --- | --- |
| 211 |  | 各类数据报表导出 | 2d | 2015-11-19 | 2015-11-20 |  |  | 35d | finish no earlier than 2015-11-20 |
| 212 | 1.3.1.3.11 | **客户管理开发** | 1d | 2015-10-16 A | 2015-10-16 |  | 48% |  |  |
| 213 |  | 客户信息（增删改查） | 1d | 2015-10-16 A | 2015-10-16 |  | 90% | 0d |  |
| 214 |  | 客户信息（导入导出） | 1d | 2015-10-16 | 2015-10-16 |  |  | 0d |  |
| 215 |  | 客户行业管理（增删改查） | 1d | 2015-10-16 A | 2015-10-16 A |  | 100% |  |  |
| 216 |  | 客户行业管理（导入导出） | 1d | 2015-10-16 | 2015-10-16 |  |  | 0d |  |
| 217 | 1.3.1.3.12 | **检验标准管理开发** | 2d | 2015-10-08 A | 2015-10-09 |  | 20% |  |  |
| 218 |  | 检验标准（增删改查） | 1d | 2015-10-08 A | 2015-10-08 |  | 80% | 1d |  |
| 219 |  | 检验标准废止 | 1d | 2015-10-08 | 2015-10-08 |  |  | 1d |  |
| 220 |  | 检验标准（导入导出） | 1d | 2015-10-08 | 2015-10-08 |  |  | 125d | start no earlier than 2015-10-08 |
| 221 |  | 检验标准（审核） | 1d | 2015-10-08 | 2015-10-08 |  |  | 0.4d | start no earlier than 2015-10-08 |
| 222 |  | 检验项目（增删改查） | 1d | 2015-10-09 A | 2015-10-09 | 221 | 40% | 0d |  |
| 223 |  | 检验项目（导入导出） | 1d | 2015-10-09 | 2015-10-09 |  |  | 124d | finish no earlier than 2015-10-09 |
| 224 | 1.3.1.3.13 | **设备管理开发** | 3d | 2015-10-12 A | 2015-10-14 |  | 16% |  |  |
| 225 |  | 设备信息（增删改查） | 1d | 2015-10-12 A | 2015-10-12 |  | 80% | 0.8d |  |
| 226 |  | 设备二维码生产 | 1d | 2015-10-12 | 2015-10-12 |  |  | 2d |  |
| 227 |  | 设备信息（导入导出） | 1d | 2015-10-12 | 2015-10-12 |  |  | 0d |  |
| 228 |  | 设备使用记录（增删改查） | 1d | 2015-10-13 | 2015-10-13 | 227 |  | 0d |  |
| 229 |  | 设备使用记录（导入导出） | 1d | 2015-10-13 | 2015-10-13 | 225 |  | 0.8d |  |
| 230 |  | 设备报修记录（增删改查） | 1d | 2015-10-12 | 2015-10-12 |  |  | 2d |  |
| 231 |  | 设备报修记录（导入导出） | 1d | 2015-10-12 | 2015-10-12 |  |  | 2d |  |
| 232 |  | 设备申购（增删改查） | 1d | 2015-10-14 A | 2015-10-14 | 229 | 80% | 0d |  |
| 233 |  | 设备申购（导入导出） | 1d | 2015-10-14 | 2015-10-14 | 228 |  | 0d |  |
| 234 |  | 设备申购（审核） | 1d | 2015-10-14 | 2015-10-14 |  |  | 121d | start no earlier than 2015-10-14 |
| 235 |  | 评审代码 | 1d | 2015-10-19 | 2015-10-19 |  |  |  |  |
| 236 |  | 单元测试 | 2d | 2015-10-20 | 2015-10-21 |  |  |  |  |
| 237 | 1.3.1.3.16 | **技术服务管理开发** | 1d | 2015-10-21 | 2015-10-21 |  |  |  |  |
| 238 |  | 技术服务（增删改查） | 1d | 2015-10-21 | 2015-10-21 |  |  | 0d |  |
| 239 |  | 技术服务（导入导出） | 1d | 2015-10-21 | 2015-10-21 |  |  | 0d |  |
| 240 | 1.3.1.3.17 | **消息管理开发** | 1d | 2015-10-22 | 2015-10-22 |  |  |  |  |
| 241 |  | 消息（增删改查） | 1d | 2015-10-22 | 2015-10-22 |  |  | 0d |  |
| 242 |  | 消息（导入导出） | 1d | 2015-10-22 | 2015-10-22 |  |  | 0d |  |
| 243 | 1.3.1.3.18 | **上岗证管理开发** | 1d | 2015-10-22 | 2015-10-22 |  |  |  |  |
| 244 |  | 上岗证（增删改查） | 1d | 2015-10-22 | 2015-10-22 |  |  | 0d |  |
| 245 |  | 上岗证（导入导出） | 1d | 2015-10-22 | 2015-10-22 |  |  | 0d |  |
| 246 | 1.3.1.3.19 | **认证产品管理研发** | 1d | 2015-10-21 | 2015-10-21 |  |  |  |  |
| 247 |  | 认证产品（增删改查） | 1d | 2015-10-21 | 2015-10-21 |  |  | 0d |  |
| 248 |  | 认证产品（导入导出） | 1d | 2015-10-21 | 2015-10-21 |  |  | 0d |  |
| 249 | 1.3.1.3.20 | **检验收费标准管理** | 1d | 2015-10-15 | 2015-10-15 |  |  |  |  |
| 250 |  | 检验收费标准（增删改查） | 1d | 2015-10-15 | 2015-10-15 |  |  | 0d |  |
| 251 |  | 检验收费标准（导入导出） | 1d | 2015-10-15 | 2015-10-15 |  |  | 0d |  |
| 252 |  | 检验收费标准（审核） | 1d | 2015-10-15 | 2015-10-15 |  |  | 0d |  |
| 253 | 1.3.1.3.21 | **投诉管理开发** | 1d | 2015-10-23 | 2015-10-23 |  |  |  |  |
| 254 |  | 投诉（增删改查） | 1d | 2015-10-23 | 2015-10-23 |  |  | 0d |  |
| 255 |  | 投诉（导入导出） | 1d | 2015-10-23 | 2015-10-23 |  |  | 0d |  |
| 256 |  | 投诉（处理） | 1d | 2015-10-23 | 2015-10-23 |  |  | 0d |  |
| 257 | 1.3.1.3.22 | **财务管理开发** | 3d | 2015-10-26 | 2015-10-28 |  |  |  |  |
| 258 | 1.3.1.3.22.1 | **报告收费** | 1d | 2015-10-26 | 2015-10-26 |  |  |  |  |
| 259 |  | 报告收费（处理） | 1d | 2015-10-26 | 2015-10-26 |  |  | 0d |  |
| 260 |  | 报告收费（修删查） | 1d | 2015-10-26 | 2015-10-26 |  |  | 0d |  |
| 261 |  | 报告收费（延期） | 1d | 2015-10-26 | 2015-10-26 |  |  | 0d |  |
| 262 | 1.3.1.3.22.2 | **成本管理** | 1d | 2015-10-27 | 2015-10-27 |  |  |  |  |
| 263 |  | 成本管理（增删改查） | 1d | 2015-10-27 | 2015-10-27 |  |  | 0d |  |
| 264 |  | 成本明细管理（增删改查） | 1d | 2015-10-27 | 2015-10-27 |  |  | 0d |  |
| 265 |  | 成本管理（导入导出） | 1d | 2015-10-27 | 2015-10-27 |  |  | 0d |  |
| 266 | 1.3.1.3.22.3 | **员工福利管理** | 1d | 2015-10-27 | 2015-10-27 |  |  |  |  |
| 267 |  | 员工福利管理（增删改查） | 1d | 2015-10-27 | 2015-10-27 |  |  | 0d |  |
| 268 |  | 员工福利明细管理（增删改查） | 1d | 2015-10-27 | 2015-10-27 |  |  | 0d |  |
| 269 |  | 员工福利管理（导入导出） | 1d | 2015-10-27 | 2015-10-27 |  |  | 0d |  |
| 270 | 1.3.1.3.22.4 | **科室收入管理** | 1d | 2015-10-28 | 2015-10-28 |  |  |  |  |
| 271 |  | 科室收入管理（增删改查） | 1d | 2015-10-28 | 2015-10-28 |  |  | 0d |  |
| 272 |  | 科室收入明细管理（增删改查） | 1d | 2015-10-28 | 2015-10-28 |  |  | 0d |  |
| 273 |  | 科室收入管理（导入导出） | 1d | 2015-10-28 | 2015-10-28 |  |  | 0d |  |
| 274 |  | 评审代码 | 1d | 2015-10-29 | 2015-10-29 |  |  |  |  |
| 275 |  | 单元测试 | 2d | 2015-10-30 | 2015-11-02 |  |  |  |  |
| 276 | 1.3.1.3.25 | **收发文管理开发** | 1d | 2015-11-03 | 2015-11-03 |  |  |  |  |
| 277 |  | 发文（增删改查） | 1d | 2015-11-03 | 2015-11-03 |  |  | 0d |  |
| 278 |  | 收文（删改查） | 1d | 2015-11-03 | 2015-11-03 |  |  | 0d |  |
| 279 | 1.3.1.3.26 | **人事管理开发** | 3d | 2015-11-04 | 2015-11-06 |  |  |  |  |
| 280 | 1.3.1.3.26.1 | **人员档案管理** | 1d | 2015-11-05 | 2015-11-05 |  |  |  |  |

| ID | WBS | Task | Duration | Start | Finish | Predecessors | Total float | Constraint |
| --- | --- | --- | --- | --- | --- | --- | --- | --- |
| 281 |  | 人员档案管理（增删改查） | 1d | 2015-11-05 | 2015-11-05 |  | 0d |  |
| 282 |  | 人员档案管理（导入导出） | 1d | 2015-11-05 | 2015-11-05 |  | 0d |  |
| 283 | 1.3.1.3.26.2 | **奖惩管理** | 1d | 2015-11-05 | 2015-11-05 |  |  |  |
| 284 |  | 奖惩管理（增删改查） | 1d | 2015-11-05 | 2015-11-05 |  | 0d |  |
| 285 |  | 奖惩管理（导入导出） | 1d | 2015-11-05 | 2015-11-05 |  | 0d |  |
| 286 | 1.3.1.3.26.3 | **薪资管理** | 1d | 2015-11-06 | 2015-11-06 |  |  |  |
| 287 |  | 薪资管理（增删改查） | 1d | 2015-11-06 | 2015-11-06 |  | 0d |  |
| 288 |  | 薪资管理（导入导出） | 1d | 2015-11-06 | 2015-11-06 |  | 0d |  |
| 289 | 1.3.1.3.26.4 | **人员管理** | 1d | 2015-11-04 | 2015-11-04 |  |  |  |
| 290 |  | 人员管理（增删改查） | 1d | 2015-11-04 | 2015-11-04 |  | 0d |  |
| 291 |  | 人员角色分配 | 1d | 2015-11-04 | 2015-11-04 |  | 0d |  |
| 292 |  | 人员管理（导入导出） | 1d | 2015-11-04 | 2015-11-04 |  | 47d | start no earlier than 2015-11-04 |
| 293 | 1.3.1.3.26.5 | **培训考核记录** | 1d | 2015-11-06 | 2015-11-06 |  |  |  |
| 294 |  | 培训考核记录（增删改查） | 1d | 2015-11-06 | 2015-11-06 |  | 0d |  |
| 295 |  | 培训考核记录（导入导出） | 1d | 2015-11-06 | 2015-11-06 |  | 0d |  |
| 296 | 1.3.1.3.27 | **科研管理开发** | 1d | 2015-11-09 | 2015-11-09 |  |  |  |
| 297 | 1.3.1.3.27.1 | **信息管理** | 1d | 2015-11-09 | 2015-11-09 |  | 0d |  |
| 298 |  | 信息管理（增删改查） | 1d | 2015-11-09 | 2015-11-09 |  | 0d |  |
| 299 |  | 信息管理（导入导出） | 1d | 2015-11-09 | 2015-11-09 |  | 0d |  |
| 300 | 1.3.1.3.27.2 | **经费管理** | 1d | 2015-11-09 | 2015-11-09 |  | 0d |  |
| 301 |  | 经费管理（增删改查） | 1d | 2015-11-09 | 2015-11-09 |  | 0d |  |
| 302 |  | 经费管理（导入导出） | 1d | 2015-11-09 | 2015-11-09 |  | 0d |  |
| 303 | 1.3.1.3.27.3 | **成果管理** | 1d | 2015-11-09 | 2015-11-09 |  | 0d |  |
| 304 |  | 成果管理（增删改查） | 1d | 2015-11-09 | 2015-11-09 |  | 0d |  |
| 305 |  | 成果管理（导入导出） | 1d | 2015-11-09 | 2015-11-09 |  | 0d |  |
| 306 | 1.3.1.3.28 | **督办管理** | 1d | 2015-11-10 | 2015-11-10 |  |  |  |
| 307 |  | 业务督办发送 | 1d | 2015-11-10 | 2015-11-10 |  | 0d |  |
| 308 |  | 业务督办回复 | 1d | 2015-11-10 | 2015-11-10 |  | 0d |  |
| 309 |  | 业务督办（查询、删除、查看） | 1d | 2015-11-10 | 2015-11-10 |  | 0d |  |
| 310 | 1.3.1.3.29 | **归档管理** | 1d | 2015-11-11 | 2015-11-11 |  |  |  |
| 311 |  | 分类管理（增删改查） | 1d | 2015-11-11 | 2015-11-11 |  | 0d |  |
| 312 |  | 保管期限（增删改查） | 1d | 2015-11-11 | 2015-11-11 |  | 0d |  |
| 313 |  | 报告归档（增删改查） | 1d | 2015-11-11 | 2015-11-11 |  | 0d |  |
| 314 |  | 报告档案延期 | 1d | 2015-11-11 | 2015-11-11 |  |  |  |
| 315 |  | 报告清档 | 1d | 2015-11-11 | 2015-11-11 |  | 0d |  |
| 316 | 1.3.1.3.30 | **系统管理开发** | 2d | 2015-11-12 | 2015-11-13 |  |  |  |
| 317 | 1.3.1.3.30.1 | **组织机构管理** | 1d | 2015-11-12 | 2015-11-12 |  |  |  |
| 318 |  | 组织机构管理（增删改查） | 1d | 2015-11-12 | 2015-11-12 |  | 0d |  |
| 319 |  | 组织机构管理（导入导出） | 1d | 2015-11-12 | 2015-11-12 |  | 41d | start no earlier than 2015-11-12 |
| 320 | 1.3.1.3.30.2 | **角色管理** | 1d | 2015-11-12 | 2015-11-12 |  |  |  |
| 321 |  | 角色管理（增删改查） | 1d | 2015-11-12 | 2015-11-12 |  | 0d |  |
| 322 |  | 角色管理（导入导出） | 1d | 2015-11-12 | 2015-11-12 |  | 41d | start no earlier than 2015-11-12 |
| 323 | 1.3.1.3.30.3 | **权限管理** | 1d | 2015-11-13 | 2015-11-13 |  |  |  |
| 324 |  | 权限管理（增删改查） | 1d | 2015-11-13 | 2015-11-13 |  | 0d |  |
| 325 |  | 权限管理（导入导出） | 1d | 2015-11-13 | 2015-11-13 |  | 0d |  |
| 326 | 1.3.1.3.30.4 | **数据字典管理** | 1d | 2015-11-13 | 2015-11-13 |  |  |  |
| 327 |  | 数据字典管理（增删改查） | 1d | 2015-11-13 | 2015-11-13 |  | 0d |  |
| 328 |  | 数据字典管理（导入导出） | 1d | 2015-11-13 | 2015-11-13 |  | 0d |  |
| 329 | 1.3.1.3.30.5 | **时效考核管理** | 1d | 2015-11-13 | 2015-11-13 |  |  |  |
| 330 |  | 时效考核管理（增删改查） | 1d | 2015-11-13 | 2015-11-13 |  | 0d |  |
| 331 |  | 时效考核管理（导入导出） | 1d | 2015-11-13 | 2015-11-13 |  | 0d |  |
| 332 | 1.3.1.3.30.6 | **系统菜单管理** | 3d | 2015-11-11 | 2015-11-13 |  |  |  |
| 333 |  | 系统菜单（增删改查） | 2d | 2015-11-11 | 2015-11-12 |  | 41d | finish no earlier than 2015-11-12 |
| 334 |  | 系统菜单（导入导出） | 1d | 2015-11-13 | 2015-11-13 |  | 40d | start no earlier than 2015-11-13 |
| 335 | 1.3.1.3.30.7 | **日志管理** | 1d | 2015-11-13 | 2015-11-13 |  |  |  |
| 336 |  | 日志管理（删查） | 1d | 2015-11-13 | 2015-11-13 |  | 0d |  |
| 337 |  | 日志管理（导出） | 1d | 2015-11-13 | 2015-11-13 |  | 0d |  |
| 338 | 1.3.1.3.30.8 | **个人资料** | 1d | 2015-11-12 | 2015-11-12 |  |  |  |
| 339 |  | 资料修改 | 1d | 2015-11-12 | 2015-11-12 |  | 0d |  |
| 340 |  | 天气预报 | 1d | 2015-11-12 | 2015-11-12 |  | 1d |  |
| 341 |  | 系统登录 | 2d | 2015-11-12 | 2015-11-13 |  | 0d |  |
| 342 |  | 修改密码 | 1d | 2015-11-13 | 2015-11-13 |  | 40d | start no earlier than 2015-11-13 |
| 343 | 1.3.1.3.31 | **流程管理开发** | 12d | 2015-10-08 | 2015-10-23 |  |  |  |
| 344 |  | 流程设置 | 7d | 2015-10-08 | 2015-10-16 |  | 60d | finish no earlier than 2015-10-16 |
| 345 |  | 流程信息（增删改查） | 5d | 2015-10-09 | 2015-10-15 |  | 61d | finish no earlier than 2015-10-15 |
| 346 |  | 流程信息（导入导出） | 2d | 2015-10-15 | 2015-10-16 |  | 60d | finish no earlier than 2015-10-16 |
| 347 |  | 流程记录 | 5d | 2015-10-19 | 2015-10-23 |  |  |  |
| 348 |  | 评审代码 | 1d | 2015-11-18 | 2015-11-18 |  | 36d | start no earlier than 2015-11-18 |
| 349 |  | 系统单元测试 | 1d | 2015-11-20 | 2015-11-20 | 348 | 94d | finish no earlier than 2015-11-20 |
| 350 |  | 综合业务管理系统培训 | 20d | 2015-12-18 | 2016-01-14 |  |  |  |

| ID | WBS | Task | Duration | Start | Finish | Predecessors | Total float | Constraint |
| --- | --- | --- | --- | --- | --- | --- | --- | --- |
| 351 | 1.3.1.5 | **质检门户功能开发** | 20d | 2016-01-11 | 2016-02-05 |  |  |  |
| 352 |  | 系统登录 | 1d | 2016-01-11 | 2016-01-11 |  | 19d |  |
| 353 | 1.3.1.5.2 | **机构概况** | 3d | 2016-01-12 | 2016-01-14 |  |  |  |
| 354 |  | 单位简介 | 1d | 2016-01-12 | 2016-01-12 |  | 2d |  |
| 355 |  | 组织架构 | 1d | 2016-01-12 | 2016-01-12 |  | 2d |  |
| 356 |  | 机构领导 | 1d | 2016-01-13 | 2016-01-13 |  | 33d | start no earlier than 2016-01-13 |
| 357 |  | 发展历程 | 1d | 2016-01-13 | 2016-01-13 |  | 33d | start no earlier than 2016-01-13 |
| 358 |  | 通知公告 | 1d | 2016-01-14 | 2016-01-14 |  | 32d | start no earlier than 2016-01-14 |
| 359 |  | 政策法规 | 1d | 2016-01-14 | 2016-01-14 |  | 32d | start no earlier than 2016-01-14 |
| 360 | 1.3.1.5.5 | **网上检验服务开发** | 7d | 2016-01-15 | 2016-01-25 |  |  |  |
| 361 |  | 样品类别查询 | 1d | 2016-01-15 | 2016-01-15 |  | 6d |  |
| 362 |  | 样品登记（增删改） | 4d | 2016-01-15 | 2016-01-20 |  | 2d | start no earlier than 2016-01-15 |
| 363 |  | 检验进度查询 | 1d | 2016-01-21 | 2016-01-21 | 362 | 2d |  |
| 364 |  | 报告查询（查询、下载） | 2d | 2016-01-22 | 2016-01-25 | 363 | 48d | start no earlier than 2016-01-15 |
| 365 | 1.3.1.5.6 | **检验服务开发** | 1d | 2016-01-26 | 2016-01-26 |  |  |  |
| 366 |  | 检验标准（查询、下载） | 1d | 2016-01-26 | 2016-01-26 |  | 0d |  |
| 367 | 1.3.1.5.7 | **客户专区** | 3d | 2016-01-27 | 2016-01-29 |  |  |  |
| 368 |  | 客户留言（增删改） | 1d | 2016-01-27 | 2016-01-27 |  | 0d |  |
| 369 |  | 客户留言（回复） | 1d | 2016-01-27 | 2016-01-27 |  | 1d |  |
| 370 |  | 进度查询 | 1d | 2016-01-28 | 2016-01-28 | 369 | 1d |  |
| 371 |  | 常用下载 | 1d | 2016-01-28 | 2016-01-28 | 368 | 0d |  |
| 372 |  | 网上服务（快捷方式） | 1d | 2016-01-29 | 2016-01-29 | 371 | 0d |  |
| 373 | 1.3.1.5.8 | **投诉与建议** | 2d | 2016-01-29 | 2016-02-01 |  |  |  |
| 374 |  | 投诉与建议（增删改） | 2d | 2016-01-29 | 2016-02-01 |  | 20d | start no earlier than 2016-01-29 |
| 375 | 1.3.1.5.9 | **样品检验结果公示** | 2d | 2016-02-02 | 2016-02-03 |  |  |  |
| 376 |  | 检验结果（查询、查看详情） | 2d | 2016-02-02 | 2016-02-03 |  | 18d | start no earlier than 2016-02-02 |
| 377 | 1.3.1.5.10 | **友情链接** | 1d | 2016-02-02 | 2016-02-02 |  |  |  |
| 378 |  | 友情链接（增删改） | 1d | 2016-02-02 | 2016-02-02 |  | 0d |  |
| 379 |  | 评审代码 | 1d | 2016-02-03 | 2016-02-03 |  | 0d | start no earlier than 2016-02-03 |
| 380 |  | 系统单元测试 | 2d | 2016-02-04 | 2016-02-05 | 379 | 0d |  |
| 381 |  | 质检门户培训 | 4d | 2016-01-11 | 2016-01-14 |  |  |  |
| 382 | 1.3.1.7 | **微信平台开发** | 25d | 2015-12-07 | 2016-01-08 |  |  |  |
| 383 | 1.3.1.7.1 | **微信后台管理功能开发** | 5d | 2015-12-07 | 2015-12-11 |  |  |  |
| 384 |  | 菜单管理 | 1d | 2015-12-07 | 2015-12-07 |  | 4d |  |
| 385 |  | 素材管理 | 1d | 2015-12-07 | 2015-12-07 |  | 4d |  |
| 386 |  | 群发管理 | 1d | 2015-12-08 | 2015-12-08 |  | 59d | start no earlier than 2015-12-08 |
| 387 |  | 用户管理 | 1d | 2015-12-08 | 2015-12-08 |  | 59d | start no earlier than 2015-12-08 |
| 388 |  | 用户分组管理 | 1d | 2015-12-09 | 2015-12-09 |  | 58d | start no earlier than 2015-12-09 |
| 389 |  | 缓存管理 | 1d | 2015-12-09 | 2015-12-09 |  | 58d | start no earlier than 2015-12-09 |
| 390 |  | 帐号绑定 | 1d | 2015-12-10 | 2015-12-10 |  | 57d | start no earlier than 2015-12-10 |
| 391 |  | 系统管理 | 2d | 2015-12-10 | 2015-12-11 |  | 56d | finish no earlier than 2015-12-11 |
| 392 | 1.3.1.7.2 | **微主页开发** | 4d | 2015-12-14 | 2015-12-17 |  |  |  |
| 393 |  | 简介 | 1d | 2015-12-14 | 2015-12-14 |  | 3d |  |
| 394 |  | 组织架构 | 1d | 2015-12-14 | 2015-12-14 |  | 3d |  |
| 395 |  | 发展历程 | 1d | 2015-12-15 | 2015-12-15 |  | 54d | start no earlier than 2015-12-15 |
| 396 |  | 质检新闻 | 1d | 2015-12-15 | 2015-12-15 |  | 54d | start no earlier than 2015-12-15 |
| 397 |  | 办事流程 | 1d | 2015-12-16 | 2015-12-16 |  | 53d | start no earlier than 2015-12-16 |
| 398 |  | 检验标准 | 1d | 2015-12-16 | 2015-12-16 |  | 53d | start no earlier than 2015-12-16 |
| 399 |  | 质量馆 | 1d | 2015-12-17 | 2015-12-17 |  | 52d | start no earlier than 2015-12-17 |
| 400 |  | 品牌馆 | 1d | 2015-12-17 | 2015-12-17 |  | 52d | start no earlier than 2015-12-17 |
| 401 |  | 联系我们 | 1d | 2015-12-17 | 2015-12-17 |  | 52d | start no earlier than 2015-12-17 |
| 402 | 1.3.1.7.3 | **微服务开发** | 6d | 2015-12-18 | 2015-12-25 |  |  |  |
| 403 |  | 扫一扫 | 2d | 2015-12-18 | 2015-12-21 |  | 50d | start no earlier than 2015-12-18 |
| 404 |  | 设备信息（查询） | 1d | 2015-12-21 | 2015-12-21 |  | 50d | start no earlier than 2015-12-21 |
| 405 |  | 设备信息（查看详情） | 1d | 2015-12-21 | 2015-12-21 |  | 50d | start no earlier than 2015-12-21 |
| 406 |  | 报告信息（查询） | 1d | 2015-12-22 | 2015-12-22 |  | 49d | start no earlier than 2015-12-22 |
| 407 |  | 报告信息（查看详情） | 1d | 2015-12-22 | 2015-12-22 |  | 49d | start no earlier than 2015-12-22 |
| 408 |  | 样品信息（查询） | 1d | 2015-12-23 | 2015-12-23 |  | 48d | start no earlier than 2015-12-23 |
| 409 |  | 样品信息（查看详情） | 1d | 2015-12-23 | 2015-12-23 |  | 48d | start no earlier than 2015-12-23 |
| 410 |  | 数据统计（查询） | 2d | 2015-12-24 | 2015-12-25 |  | 46d | finish no earlier than 2015-12-25 |
| 411 |  | 数据统计（查看详情） | 1d | 2015-12-25 | 2015-12-25 |  | 46d | start no earlier than 2015-12-25 |
| 412 | 1.3.1.7.4 | **微管理开发** | 4d | 2015-12-28 | 2015-12-31 |  |  |  |
| 413 |  | 我的任务（查询） | 1d | 2015-12-28 | 2015-12-28 |  | 3d |  |
| 414 |  | 我的任务（查看详情） | 1d | 2015-12-28 | 2015-12-28 |  | 3d |  |
| 415 | 1.3.1.7.4.3 | **我的申请** | 2d | 2015-12-29 | 2015-12-30 |  |  |  |
| 416 |  | 我的申请（申请） | 1d | 2015-12-29 | 2015-12-29 |  | 1d |  |
| 417 |  | 我的申请（查询） | 1d | 2015-12-29 | 2015-12-29 |  | 1d |  |
| 418 |  | 我的申请（审批） | 1d | 2015-12-30 | 2015-12-30 |  | 43d | start no earlier than 2015-12-30 |
| 419 |  | 我的申请（查看详情） | 1d | 2015-12-30 | 2015-12-30 |  | 43d | start no earlier than 2015-12-30 |
| 420 | 1.3.1.7.4.4 | **工作汇报** | 1d | 2015-12-31 | 2015-12-31 |  |  |  |

| ID | WBS | Task | Duration | Start | Finish | Predecessors | Total float | Constraint |
| --- | --- | --- | --- | --- | --- | --- | --- | --- |
| 421 |  | 工作汇报编制、发送 | 1d | 2015-12-31 | 2015-12-31 |  | 0d |  |
| 422 |  | 收到的汇报查阅 | 1d | 2015-12-31 | 2015-12-31 |  |  |  |
| 423 |  | 评审代码 | 1d | 2016-01-01 | 2016-01-01 |  | 41d | start no earlier than 2016-01-01 |
| 424 |  | 系统单元测试 | 2d | 2016-01-04 | 2016-01-05 |  | 62d | start no earlier than 2016-01-02 |
| 425 |  | 微信培训 | 3d | 2016-01-06 | 2016-01-08 |  |  |  |
| 426 |  | 扫码枪接口 | 7d | 2016-02-08 | 2016-02-16 |  | 32d | start no earlier than 2016-02-08 |
| 427 |  | 二维码打印机接口 | 7d | 2016-02-08 | 2016-02-16 |  | 32d | start no earlier than 2016-02-08 |
| 428 |  | 数据接口对接（新闻等） | 7d | 2016-02-08 | 2016-02-16 |  | 32d | finish no earlier than 2016-02-16 |
| 429 |  | 评审代码 | 1d | 2016-02-17 | 2016-02-17 |  | 31d | finish no earlier than 2016-02-17 |
| 430 |  | 系统整体测试 | 2d | 2016-02-18 | 2016-02-19 |  | 29d | finish no earlier than 2016-02-19 |
| 431 |  | 修改代码 | 6d | 2016-02-22 | 2016-02-29 |  | 23d | finish no earlier than 2016-02-29 |
| 432 | 1.4 | **测试阶段** | 6d | 2016-03-01 | 2016-03-08 |  |  |  |
| 433 |  | 执行测试 | 3d | 2016-03-01 | 2016-03-03 |  | 20d | finish no earlier than 2016-03-03 |
| 434 |  | 修改BUG | 3d | 2016-03-04 | 2016-03-08 |  | 17d | finish no earlier than 2016-03-08 |
| 435 | 1.5 | **实施阶段** | 8d | 2016-02-29 | 2016-03-09 |  |  |  |
| 436 |  | 编写安装部署文档 | 1d | 2016-02-29 | 2016-02-29 |  | 7d |  |
| 437 |  | 编写用户手册 | 3d | 2016-03-01 | 2016-03-03 | 436 | 16d | start no earlier than 2015-12-02 |
| 438 |  | 系统培训 | 4d | 2016-03-04 | 2016-03-09 | 437 | 16d | finish no earlier than 2015-12-10 |
| 439 |  | 系统试运行 | 23d | 2015-12-01 | 2015-12-31 |  | 65d | finish no earlier than 2015-12-31 |
| 440 |  | 系统正式上线 | 1d | 2016-03-10 | 2016-03-10 | 439 | 10d | start no earlier than 2016-03-10 |
| 441 |  | 项目验收 | 5d | 2016-03-11 | 2016-03-17 | 440 | 10d |  |
| 442 | 1.9 | **结项活动** | 5d | 2016-03-18 | 2016-03-24 |  |  |  |
| 443 |  | 项目分析 | 2d | 2016-03-18 | 2016-03-21 |  | 2d | finish no earlier than 2016-03-21 |
| 444 |  | 项目总结会 | 1d | 2016-03-22 | 2016-03-22 | 443 | 2d |  |
| 445 |  | 关闭项目并转为技术支持 | 2d | 2016-03-23 | 2016-03-24 | 444 | 5d | start no earlier than 2016-01-07 |
| 447 |  | 730/100/7*100=104分 | 1d? | 2016-03-18 | 2016-03-18 |  |  |  |

## Version 2 (saved 2015-10-21, file (第2周)安徽省质检院综合业务系统总体计划.mpp)

Note of the change: test

Last finish stays 2016-03-31. Complete tasks 5 → 43.

Changed:

| ID | Task | Start | Finish | Complete | Total float | Other |
| --- | --- | --- | --- | --- | --- | --- |
| 1 | **安徽省质检院综合业务系统总体计划** |  |  | 5% → 16% |  |  |
| 2 | **需求调研** |  |  | 15% → 60% |  | resources none → 蒋永正 |
| 3 | 流程调研 |  |  | 10% → 90% |  |  |
| 5 | **基础信息资料准备** |  |  | 16% → 62% |  |  |
| 6 | 角色设置信息 |  |  | 10% → 60% |  |  |
| 7 | 权限设置信息 | 2015-09-29 A |  | 0% → 60% | 108d → 131d |  |
| 8 | 字典设置信息 |  |  | 20% → 60% |  |  |
| 11 | 检验标准信息 |  |  | 10% → 40% |  |  |
| 12 | 检验收费标准信息 |  | 2015-09-24 A | 10% → 100% | 135d → none |  |
| 13 | 设备信息 | 2015-09-25 A | 2015-09-28 A | 0% → 100% | 110d → none |  |
| 14 | 客户信息 | 2015-09-29 A |  | 0% → 40% | 109d → 132d |  |
| 15 | 认证产品信息 | 2015-09-30 A |  | 0% → 40% | 108d → 131d |  |
| 23 | **系统开发** |  |  | 5% → 16% |  |  |
| 24 | **功能实现阶段** |  |  | 5% → 16% |  |  |
| 33 | **项目界面设计** | 2015-09-14 A |  | 0% → 2% |  | resources 段佩君; 刘松; 王喆之 → 段佩君; 刘松; 王喆之; 刘健森 |
| 34 | **综合业务管理系统界面设计** | 2015-09-14 A |  | 0% → 5% |  | resources 段佩君; 刘松; 王喆之 → 段佩君; 刘松; 王喆之; 刘健森 |
| 35 | **系统主页界面设计** | 2015-09-14 A | 2015-09-15 A | 0% → 100% |  | resources 段佩君; 刘松; 王喆之 → 刘健森; 王喆之 |
| 36 | 系统主页设置界面设计 | 2015-09-15 A | 2015-09-15 A | 0% → 100% | 120d → none | resources 段佩君; 刘松; 王喆之 → 刘健森; 王喆之 |
| 92 | **业务系统功能开发** |  |  | 3% → 23% |  |  |
| 94 | **样品管理开发** |  |  | 21% → 50% |  | resources none → 段佩君 |
| 95 | 样品信息（增删改查） |  | 2015-09-14 A | 40% → 100% | 2d → none |  |
| 96 | 样品二维码生成 |  |  |  |  | resources none → 段佩君 |
| 97 | 样品信息（导入导出） |  |  |  |  | resources none → 段佩君 |
| 98 | 样品登记复核 |  |  |  | 84d → 143d | resources none → 段佩君 |
| 99 | 样品登记审核 |  |  |  | 83d → 142d | resources none → 段佩君 |
| 100 | **样品领用** |  | 2015-09-14 A | 40% → 100% | 3d → none |  |
| 101 | 领用审核 |  | 2015-09-14 A | 40% → 100% | 3d → none |  |
| 102 | **样品归还** |  | 2015-09-14 A | 40% → 100% | 3d → none |  |
| 103 | 归还审核 |  | 2015-09-14 A | 40% → 100% | 3d → none |  |
| 104 | **样品退样** |  | 2015-09-14 A | 40% → 100% | 3d → none |  |
| 105 | 退样审核 |  | 2015-09-14 A | 40% → 100% | 3d → none |  |
| 106 | **预检方案** |  |  | 25% → 50% |  |  |
| 107 | 预检方案（增删改查） |  |  | 30% → 63% |  |  |
| 108 | 预检方案(导入导出) |  |  | 15% → 25% |  |  |
| 109 | **检验管理开发** | 2015-09-18 A |  | 0% → 25% |  | resources none → 段佩君; 刘健森; 张益 |
| 110 | **样品检验** | 2015-09-18 A |  | 0% → 40% |  | resources none → 段佩君; 刘健森 |
| 111 | 样品详情 | 2015-09-18 A |  | 0% → 40% |  | resources none → 段佩君 |
| 112 | 检验项目（增删改） | 2015-09-18 A |  | 0% → 40% |  | resources none → 段佩君 |
| 113 | 设备信息（增删改） | 2015-09-18 A |  | 0% → 40% | 81d → 140d | resources none → 段佩君 |
| 114 | 检验判定增加 | 2015-09-18 A |  | 0% → 40% |  | resources none → 段佩君 |
| 115 | 检验原始记录上传 | 2015-09-18 A |  | 0% → 40% |  | resources none → 段佩君 |
| 116 | **检验复核** |  |  |  |  | resources none → 段佩君 |
| 117 | 退回 |  |  |  |  | resources none → 段佩君 |
| 118 | **检验审核** |  |  |  |  | resources none → 段佩君 |
| 119 | 退回 |  |  |  |  | resources none → 段佩君 |
| 120 | **检验退检** |  |  |  |  | resources none → 段佩君 |
| 121 | 退检审核 |  |  |  |  | resources none → 段佩君 |
| 124 | **检验报告编制** | 2015-09-25 A |  | 0% → 7% |  | resources none → 段佩君 |
| 125 | **报告编制** | 2015-09-25 A |  | 0% → 30% |  | resources none → 段佩君 |
| 126 | 编制报告 | 2015-09-25 A |  | 0% → 60% |  | resources none → 段佩君 |
| 127 | 报告二维码生成 |  |  |  |  | resources none → 段佩君 |
| 128 | 报告预览 |  |  |  | 74d → 133d | resources none → 段佩君 |
| 129 | **报告复核** |  |  |  |  | resources none → 段佩君 |
| 130 | 退回 |  |  |  |  | resources none → 段佩君 |
| 131 | 报告预览 |  |  |  | 73d → 132d | resources none → 段佩君 |
| 132 | **报告审核** |  |  |  |  | resources none → 段佩君 |
| 133 | 退回 |  |  |  |  | resources none → 段佩君 |
| 134 | 报告预览 |  |  |  | 73d → 132d | resources none → 段佩君 |
| 135 | **报告批准** |  |  |  |  | resources none → 段佩君 |
| 136 | 退回 |  |  |  |  | resources none → 段佩君 |
| 137 | 报告预览 |  |  |  | 72d → 131d | resources none → 段佩君 |
| 138 | **报告发放** |  |  |  |  | resources none → 段佩君 |
| 139 | 报告预览 |  |  |  | 72d → 131d | resources none → 段佩君 |
| 140 | 报告打印 |  |  |  |  | resources none → 段佩君 |
| 141 | 报告归档 |  |  |  |  | resources none → 段佩君 |
| 142 | 报告解锁 |  |  |  | 70d → 129d | resources none → 段佩君 |
| 143 | 退检报告（改、删、查） |  |  |  |  | resources none → 段佩君 |
| 144 | 超期报告（改、删、查） |  |  |  |  | resources none → 段佩君 |
| 147 | **任务管理开发** | 2015-09-16 A |  | 0% → 50% |  | resources none → 段佩君 |
| 148 | **我的任务** | 2015-09-16 A | 2015-09-16 A | 0% → 100% |  | resources none → 段佩君 |

| ID | Task | Start | Finish | Duration | Complete | Total float | Other |
| --- | --- | --- | --- | --- | --- | --- | --- |
| 149 | 任务处理(查、改) | 2015-09-16 A | 2015-09-16 A |  | 0% → 100% | 0d → none | resources none → 段佩君 |
| 150 | 任务详情 | 2015-09-16 A | 2015-09-16 A |  | 0% → 100% | 0d → none | resources none → 段佩君 |
| 151 | 任务延期（查、改） | 2015-09-16 A | 2015-09-16 A |  | 0% → 100% | 83d → none | resources none → 段佩君 |
| 152 | **任务下达（分配—指派）** | 2015-09-17 A | 2015-09-17 A |  | 0% → 100% |  | resources none → 段佩君 |
| 153 | 任务分配（改、删、查） | 2015-09-17 A | 2015-09-17 A |  | 0% → 100% | 0d → none | resources none → 段佩君 |
| 154 | 任务指派（改、删、查） | 2015-09-17 A | 2015-09-17 A |  | 0% → 100% | 82d → none | resources none → 段佩君 |
| 155 | 任务延期（改、删、查） | 2015-09-17 A | 2015-09-17 A |  | 0% → 100% | 82d → none | resources none → 段佩君 |
| 212 | **客户管理开发** |  |  |  | 48% → 50% |  |  |
| 213 | 客户信息（增删改查） |  | 2015-10-16 A |  | 90% → 100% | 0d → none |  |
| 217 | **检验标准管理开发** |  |  |  | 20% → 42% |  | resources 马彪 → 段佩君 |
| 218 | 检验标准（增删改查） |  | 2015-10-08 A | 1d → 0.2d | 80% → 100% | 1d → none | resources 马彪 → 段佩君 |
| 219 | 检验标准废止 | 2015-10-08 A | 2015-10-08 A |  | 0% → 100% | 1d → none | resources 马彪 → 段佩君 |
| 220 | 检验标准（导入导出） |  |  |  |  |  | resources 马彪 → 段佩君 |
| 221 | 检验标准（审核） |  |  |  |  | 0.4d → 125d | resources 马彪 → 段佩君 |
| 222 | 检验项目（增删改查） |  | 2015-10-09 A |  | 40% → 100% | 0d → none | resources 马彪 → 段佩君 |
| 223 | 检验项目（导入导出） |  |  |  |  |  | resources 马彪 → 段佩君 |
| 224 | **设备管理开发** |  |  |  | 16% → 44% |  |  |
| 225 | 设备信息（增删改查） |  | 2015-10-12 A |  | 80% → 100% | 0.8d → none |  |
| 228 | 设备使用记录（增删改查） | 2015-10-13 A | 2015-10-13 A |  | 0% → 100% | 0d → none |  |
| 230 | 设备报修记录（增删改查） | 2015-10-12 A | 2015-10-12 A |  | 0% → 100% | 2d → none |  |
| 232 | 设备申购（增删改查） |  | 2015-10-14 A |  | 80% → 100% | 0d → none |  |
| 234 | 设备申购（审核） | 2015-10-14 A |  |  | 0% → 40% |  |  |
| 237 | **技术服务管理开发** | 2015-10-21 A |  |  | 0% → 50% |  | resources none → 刘松 |
| 238 | 技术服务（增删改查） | 2015-10-21 A | 2015-10-21 A |  | 0% → 100% | 0d → none | resources none → 刘松 |
| 239 | 技术服务（导入导出） |  |  |  |  |  | resources none → 刘松 |
| 240 | **消息管理开发** | 2015-10-22 A |  |  | 0% → 50% |  | resources none → 段佩君 |
| 241 | 消息（增删改查） | 2015-10-22 A | 2015-10-22 A |  | 0% → 100% | 0d → none | resources none → 段佩君 |
| 242 | 消息（导入导出） |  |  |  |  |  | resources none → 段佩君 |
| 246 | **认证产品管理研发** | 2015-10-21 A |  |  | 0% → 50% |  | resources none → 王勇 |
| 247 | 认证产品（增删改查） | 2015-10-21 A | 2015-10-21 A |  | 0% → 100% | 0d → none | resources none → 王勇 |
| 248 | 认证产品（导入导出） |  |  |  |  |  | resources none → 王勇 |
| 249 | **检验收费标准管理** | 2015-10-15 A |  |  | 0% → 43% |  | resources none → 梁凯迪 |
| 250 | 检验收费标准（增删改查） | 2015-10-15 A | 2015-10-15 A |  | 0% → 100% | 0d → none | resources none → 梁凯迪 |
| 251 | 检验收费标准（导入导出） |  |  |  |  |  | resources none → 梁凯迪 |
| 252 | 检验收费标准（审核） | 2015-10-15 A |  |  | 0% → 30% |  | resources none → 梁凯迪 |
| 253 | **投诉管理开发** | 2015-10-23 A |  |  | 0% → 43% |  | resources none → 梁凯迪 |
| 254 | 投诉（增删改查） | 2015-10-23 A |  |  | 0% → 70% |  | resources none → 梁凯迪 |
| 255 | 投诉（导入导出） |  |  |  |  |  | resources none → 梁凯迪 |
| 256 | 投诉（处理） | 2015-10-23 A |  |  | 0% → 60% |  | resources none → 梁凯迪 |
| 257 | **财务管理开发** | 2015-10-26 A |  |  | 0% → 50% |  | resources none → 刘健森; 王勇 |
| 258 | **报告收费** |  |  |  |  |  | resources none → 刘健森 |
| 259 | 报告收费（处理） |  |  |  |  |  | resources none → 刘健森 |
| 260 | 报告收费（修删查） |  |  |  |  |  | resources none → 刘健森 |
| 261 | 报告收费（延期） |  |  |  |  |  | resources none → 刘健森 |
| 262 | **成本管理** | 2015-10-27 A |  |  | 0% → 67% |  | resources none → 王勇 |
| 263 | 成本管理（增删改查） | 2015-10-27 A | 2015-10-27 A |  | 0% → 100% | 0d → none | resources none → 王勇 |
| 264 | 成本明细管理（增删改查） | 2015-10-27 A | 2015-10-27 A |  | 0% → 100% | 0d → none | resources none → 王勇 |
| 265 | 成本管理（导入导出） |  |  |  |  |  | resources none → 王勇 |
| 266 | **员工福利管理** | 2015-10-27 A |  |  | 0% → 67% |  | resources none → 王勇 |
| 267 | 员工福利管理（增删改查） | 2015-10-27 A | 2015-10-27 A |  | 0% → 100% | 0d → none | resources none → 王勇 |
| 268 | 员工福利明细管理（增删改查） | 2015-10-27 A | 2015-10-27 A |  | 0% → 100% | 0d → none | resources none → 王勇 |
| 269 | 员工福利管理（导入导出） |  |  |  |  |  | resources none → 王勇 |
| 270 | **科室收入管理** | 2015-10-28 A |  |  | 0% → 67% |  | resources none → 王勇 |
| 271 | 科室收入管理（增删改查） | 2015-10-28 A | 2015-10-28 A |  | 0% → 100% | 0d → none | resources none → 王勇 |
| 272 | 科室收入明细管理（增删改查） | 2015-10-28 A | 2015-10-28 A |  | 0% → 100% | 0d → none | resources none → 王勇 |
| 273 | 科室收入管理（导入导出） |  |  |  |  |  | resources none → 王勇 |
| 296 | **科研管理开发** | 2015-11-09 A |  |  | 0% → 49% |  | resources none → 刘松 |
| 297 | **信息管理** | 2015-11-09 A |  |  | 0% → 50% |  | resources none → 刘松 |
| 298 | 信息管理（增删改查） | 2015-11-09 A | 2015-11-09 A |  | 0% → 100% | 0d → none | resources none → 刘松 |
| 299 | 信息管理（导入导出） |  |  |  |  |  | resources none → 刘松 |
| 300 | **经费管理** | 2015-11-09 A |  |  | 0% → 50% |  | resources none → 刘松 |
| 301 | 经费管理（增删改查） | 2015-11-09 A | 2015-11-09 A |  | 0% → 100% | 0d → none | resources none → 刘松 |
| 302 | 经费管理（导入导出） |  |  |  |  |  | resources none → 刘松 |
| 303 | **成果管理** | 2015-11-09 A |  |  | 0% → 48% |  | resources none → 刘松 |
| 304 | 成果管理（增删改查） | 2015-11-09 A |  |  | 0% → 95% |  | resources none → 刘松 |
| 305 | 成果管理（导入导出） |  |  |  |  |  | resources none → 刘松 |
| 310 | **归档管理** | 2015-11-11 A | 2015-11-11 A |  | 0% → 100% |  | resources none → 刘松 |
| 311 | 分类管理（增删改查） | 2015-11-11 A | 2015-11-11 A |  | 0% → 100% | 0d → none | resources none → 刘松 |
| 312 | 保管期限（增删改查） | 2015-11-11 A | 2015-11-11 A |  | 0% → 100% | 0d → none | resources none → 刘松 |
| 313 | 报告归档（增删改查） | 2015-11-11 A | 2015-11-11 A |  | 0% → 100% | 0d → none | resources none → 刘松 |

| ID | Task | Start | Finish | Complete | Total float | Other |
| --- | --- | --- | --- | --- | --- | --- |
| 314 | 报告档案延期 | 2015-11-11 A | 2015-11-11 A | 0% → 100% |  | resources none → 刘松 |
| 315 | 报告清档 | 2015-11-11 A | 2015-11-11 A | 0% → 100% | 0d → none | resources none → 刘松 |
| 343 | **流程管理开发** | 2015-10-08 A |  | 0% → 43% |  | resources none → 张益 |
| 344 | 流程设置 | 2015-10-08 A |  | 0% → 60% | 60d → 119d | resources none → 张益 |
| 345 | 流程信息（增删改查） | 2015-10-09 A |  | 0% → 50% | 61d → 120d | resources none → 张益 |
| 346 | 流程信息（导入导出） |  |  |  | 60d → 119d | resources none → 张益 |
| 347 | 流程记录 | 2015-10-19 A |  | 0% → 30% |  | resources none → 张益 |

## Version 3 (saved 2015-10-26, file (第3周)安徽省质检院综合业务系统总体计划.mpp)

Note of the change: test

Last finish stays 2016-03-31. Complete tasks 43 → 66.

Changed:

| ID | Task | Start | Finish | Duration | Complete | Total float | Other |
| --- | --- | --- | --- | --- | --- | --- | --- |
| 1 | **安徽省质检院综合业务系统总体计划** |  |  |  | 16% → 22% |  |  |
| 2 | **需求调研** |  |  |  | 60% → 61% |  |  |
| 5 | **基础信息资料准备** |  |  |  | 62% → 64% |  |  |
| 14 | 客户信息 |  |  |  | 40% → 60% |  |  |
| 15 | 认证产品信息 |  |  |  | 40% → 60% |  |  |
| 23 | **系统开发** |  |  |  | 16% → 23% |  |  |
| 24 | **功能实现阶段** |  |  |  | 16% → 23% |  |  |
| 92 | **业务系统功能开发** |  |  |  | 23% → 37% |  |  |
| 94 | **样品管理开发** |  |  |  | 50% → 72% |  |  |
| 97 | 样品信息（导入导出） | 2015-09-15 A | 2015-09-15 A |  | 0% → 100% | 2d → none |  |
| 106 | **预检方案** |  |  |  | 50% → 97% |  |  |
| 107 | 预检方案（增删改查） |  |  |  | 63% → 95% |  |  |
| 108 | 预检方案(导入导出) |  | 2015-09-15 A |  | 25% → 100% | 2d → none |  |
| 109 | **检验管理开发** |  |  |  | 25% → 55% |  |  |
| 110 | **样品检验** |  |  |  | 40% → 70% |  |  |
| 111 | 样品详情 |  |  |  | 40% → 70% |  |  |
| 112 | 检验项目（增删改） |  |  |  | 40% → 70% |  |  |
| 113 | 设备信息（增删改） |  |  |  | 40% → 70% |  |  |
| 114 | 检验判定增加 |  |  |  | 40% → 70% |  |  |
| 115 | 检验原始记录上传 |  |  |  | 40% → 70% |  |  |
| 116 | **检验复核** | 2015-09-18 A |  |  | 0% → 30% |  |  |
| 117 | 退回 | 2015-09-18 A |  |  | 0% → 30% |  |  |
| 118 | **检验审核** | 2015-09-18 A |  |  | 0% → 30% |  |  |
| 119 | 退回 | 2015-09-18 A |  |  | 0% → 30% |  |  |
| 120 | **检验退检** | 2015-09-18 A |  |  | 0% → 30% |  |  |
| 121 | 退检审核 | 2015-09-18 A |  |  | 0% → 30% |  |  |
| 122 | 评审代码 |  |  |  |  |  | resources none → 何书查 |
| 123 | 单元测试 | 2015-09-23 A | 2015-09-24 A |  | 0% → 100% |  | resources none → 蒋永正; 何书查 |
| 145 | 评审代码 |  |  |  |  |  | resources none → 何书查 |
| 146 | 单元测试 | 2015-10-06 A | 2015-10-07 A |  | 0% → 100% |  | resources none → 何书查; 蒋永正 |
| 212 | **客户管理开发** |  |  |  | 50% → 99% |  |  |
| 214 | 客户信息（导入导出） | 2015-10-16 A | 2015-10-16 A |  | 0% → 100% | 0d → none |  |
| 216 | 客户行业管理（导入导出） | 2015-10-16 A | 2015-10-16 A |  | 0% → 100% | 0d → none |  |
| 217 | **检验标准管理开发** |  |  |  | 42% → 81% |  |  |
| 220 | 检验标准（导入导出） | 2015-10-08 A | 2015-10-08 A |  | 0% → 100% | 125d → none |  |
| 223 | 检验项目（导入导出） | 2015-10-09 A | 2015-10-09 A |  | 0% → 100% | 124d → none |  |
| 235 | 评审代码 |  |  |  |  |  | resources none → 何书查 |
| 236 | 单元测试 | 2015-10-20 A | 2015-10-21 → 2015-10-20 A (-1d) | 2d → 0d | 0% → 100% |  | resources none → 蒋永正; 何书查 |
| 243 | **上岗证管理开发** | 2015-10-22 A | 2015-10-22 A |  | 0% → 100% |  | resources none → 梁凯迪 |
| 244 | 上岗证（增删改查） | 2015-10-22 A | 2015-10-22 A |  | 0% → 100% | 0d → none | resources none → 梁凯迪 |
| 245 | 上岗证（导入导出） | 2015-10-22 A | 2015-10-22 A |  | 0% → 100% | 0d → none | resources none → 梁凯迪 |
| 249 | **检验收费标准管理** |  |  |  | 43% → 77% |  |  |
| 251 | 检验收费标准（导入导出） | 2015-10-15 A | 2015-10-15 A |  | 0% → 100% | 0d → none |  |
| 274 | 评审代码 |  |  |  |  |  | resources none → 何书查 |
| 275 | 单元测试 | 2015-10-30 A | 2015-11-02 A |  | 0% → 100% |  | resources none → 何书查; 蒋永正 |
| 279 | **人事管理开发** | 2015-11-04 A |  |  | 0% → 55% |  | resources none → 王勇 |
| 280 | **人员档案管理** | 2015-11-05 A | 2015-11-05 A |  | 0% → 100% |  | resources none → 王勇 |
| 281 | 人员档案管理（增删改查） | 2015-11-05 A | 2015-11-05 A |  | 0% → 100% | 0d → none | resources none → 王勇 |
| 282 | 人员档案管理（导入导出） | 2015-11-05 A | 2015-11-05 A |  | 0% → 100% | 0d → none | resources none → 王勇 |
| 283 | **奖惩管理** | 2015-11-05 A | 2015-11-05 A |  | 0% → 100% |  | resources none → 王勇 |
| 284 | 奖惩管理（增删改查） | 2015-11-05 A | 2015-11-05 A |  | 0% → 100% | 0d → none | resources none → 王勇 |
| 285 | 奖惩管理（导入导出） | 2015-11-05 A | 2015-11-05 A |  | 0% → 100% | 0d → none | resources none → 王勇 |
| 286 | **薪资管理** | 2015-11-06 A |  |  | 0% → 50% |  | resources none → 王勇 |
| 287 | 薪资管理（增删改查） | 2015-11-06 A | 2015-11-06 A |  | 0% → 100% | 0d → none | resources none → 王勇 |
| 288 | 薪资管理（导入导出） |  |  |  |  |  | resources none → 王勇 |
| 289 | **人员管理** |  |  |  |  |  | resources none → 王勇 |
| 290 | 人员管理（增删改查） |  |  |  |  |  | resources none → 王勇 |
| 291 | 人员角色分配 |  |  |  |  |  | resources none → 王勇 |
| 292 | 人员管理（导入导出） |  |  |  |  |  | resources none → 王勇 |
| 293 | **培训考核记录** | 2015-11-06 A |  |  | 0% → 50% |  | resources none → 王勇 |
| 294 | 培训考核记录（增删改查） | 2015-11-06 A | 2015-11-06 A |  | 0% → 100% | 0d → none | resources none → 王勇 |
| 295 | 培训考核记录（导入导出） |  |  |  |  |  | resources none → 王勇 |
| 296 | **科研管理开发** |  |  |  | 49% → 50% |  |  |
| 303 | **成果管理** |  |  |  | 48% → 50% |  |  |
| 304 | 成果管理（增删改查） |  | 2015-11-09 A |  | 95% → 100% | 0d → none |  |
| 306 | **督办管理** | 2015-11-10 A | 2015-11-10 A |  | 0% → 100% |  | resources none → 刘松 |
| 307 | 业务督办发送 | 2015-11-10 A | 2015-11-10 A |  | 0% → 100% | 0d → none | resources none → 刘松 |
| 308 | 业务督办回复 | 2015-11-10 A | 2015-11-10 A |  | 0% → 100% | 0d → none | resources none → 刘松 |
| 309 | 业务督办（查询、删除、查看） | 2015-11-10 A | 2015-11-10 A |  | 0% → 100% | 0d → none | resources none → 刘松 |
| 343 | **流程管理开发** |  |  |  | 43% → 57% |  |  |

| ID | Task | Complete |
| --- | --- | --- |
| 344 | 流程设置 | 60% → 70% |
| 345 | 流程信息（增删改查） | 50% → 70% |
| 347 | 流程记录 | 30% → 50% |

## Version 4 (saved 2015-11-02, file (第4周)安徽省质检院综合业务系统总体计划.mpp)

Note of the change: test

Last finish stays 2016-03-31. Complete tasks 66 → 101.

Changed:

| ID | Task | Start | Finish | Complete | Total float |
| --- | --- | --- | --- | --- | --- |
| 1 | **安徽省质检院综合业务系统总体计划** | 2015-09-14 A → 2015-09-14 |  | 22% → 31% |  |
| 2 | **需求调研** |  |  | 61% → 73% |  |
| 5 | **基础信息资料准备** |  |  | 64% → 78% |  |
| 6 | 角色设置信息 |  |  | 60% → 80% |  |
| 7 | 权限设置信息 |  |  | 60% → 80% |  |
| 8 | 字典设置信息 |  |  | 60% → 80% |  |
| 11 | 检验标准信息 |  |  | 40% → 60% |  |
| 14 | 客户信息 |  |  | 60% → 80% |  |
| 15 | 认证产品信息 |  |  | 60% → 80% |  |
| 23 | **系统开发** | 2015-09-14 A → 2015-09-14 |  | 23% → 33% |  |
| 24 | **功能实现阶段** | 2015-09-14 A → 2015-09-14 |  | 23% → 34% |  |
| 92 | **业务系统功能开发** | 2015-09-14 A → 2015-09-14 |  | 37% → 58% |  |
| 94 | **样品管理开发** |  |  | 72% → 71% |  |
| 106 | **预检方案** |  |  | 97% → 94% |  |
| 107 | 预检方案（增删改查） |  |  | 95% → 92% |  |
| 109 | **检验管理开发** |  |  | 55% → 66% |  |
| 110 | **样品检验** |  |  | 70% → 80% |  |
| 111 | 样品详情 |  |  | 70% → 80% |  |
| 112 | 检验项目（增删改） |  |  | 70% → 80% |  |
| 113 | 设备信息（增删改） |  |  | 70% → 80% |  |
| 114 | 检验判定增加 |  |  | 70% → 80% |  |
| 115 | 检验原始记录上传 |  |  | 70% → 80% |  |
| 116 | **检验复核** |  |  | 30% → 45% |  |
| 117 | 退回 |  |  | 30% → 45% |  |
| 118 | **检验审核** |  |  | 30% → 40% |  |
| 119 | 退回 |  |  | 30% → 40% |  |
| 120 | **检验退检** |  |  | 30% → 40% |  |
| 121 | 退检审核 |  |  | 30% → 40% |  |
| 124 | **检验报告编制** |  |  | 7% → 19% |  |
| 125 | **报告编制** |  |  | 30% → 35% |  |
| 126 | 编制报告 |  |  | 60% → 70% |  |
| 129 | **报告复核** | 2015-09-29 A |  | 0% → 30% |  |
| 130 | 退回 | 2015-09-29 A |  | 0% → 30% |  |
| 131 | 报告预览 | 2015-09-29 A |  | 0% → 30% |  |
| 132 | **报告审核** | 2015-09-29 A |  | 0% → 30% |  |
| 133 | 退回 | 2015-09-29 A |  | 0% → 30% |  |
| 134 | 报告预览 | 2015-09-29 A |  | 0% → 30% |  |
| 135 | **报告批准** | 2015-09-30 A |  | 0% → 20% |  |
| 136 | 退回 | 2015-09-30 A |  | 0% → 20% |  |
| 137 | 报告预览 | 2015-09-30 A |  | 0% → 20% |  |
| 138 | **报告发放** | 2015-09-30 A |  | 0% → 20% |  |
| 139 | 报告预览 | 2015-09-30 A |  | 0% → 20% |  |
| 217 | **检验标准管理开发** |  |  | 81% → 88% |  |
| 221 | 检验标准（审核） | 2015-10-08 A |  | 0% → 40% |  |
| 224 | **设备管理开发** |  |  | 44% → 87% |  |
| 227 | 设备信息（导入导出） | 2015-10-12 A | 2015-10-12 A | 0% → 100% | 2d → none |
| 229 | 设备使用记录（导入导出） | 2015-10-13 A | 2015-10-13 A | 0% → 100% | 1d → none |
| 231 | 设备报修记录（导入导出） | 2015-10-12 A | 2015-10-12 A | 0% → 100% | 2d → none |
| 233 | 设备申购（导入导出） | 2015-10-14 A | 2015-10-14 A | 0% → 100% | 0d → none |
| 234 | 设备申购（审核） |  |  | 40% → 70% |  |
| 237 | **技术服务管理开发** |  |  | 50% → 99% |  |
| 239 | 技术服务（导入导出） | 2015-10-21 A | 2015-10-21 A | 0% → 100% | 0d → none |
| 240 | **消息管理开发** |  | 2015-10-22 A | 50% → 100% |  |
| 242 | 消息（导入导出） | 2015-10-22 A | 2015-10-22 A | 0% → 100% | 0d → none |
| 246 | **认证产品管理研发** |  | 2015-10-21 A | 50% → 100% |  |
| 248 | 认证产品（导入导出） | 2015-10-21 A | 2015-10-21 A | 0% → 100% | 0d → none |
| 249 | **检验收费标准管理** |  | 2015-10-15 A | 77% → 100% |  |
| 252 | 检验收费标准（审核） |  | 2015-10-15 A | 30% → 100% | 0d → none |
| 253 | **投诉管理开发** |  | 2015-10-23 A | 43% → 100% |  |
| 254 | 投诉（增删改查） |  | 2015-10-23 A | 70% → 100% | 0d → none |
| 255 | 投诉（导入导出） | 2015-10-23 A | 2015-10-23 A | 0% → 100% | 0d → none |
| 256 | 投诉（处理） |  | 2015-10-23 A | 60% → 100% | 0d → none |
| 257 | **财务管理开发** | 2015-10-26 A → 2015-10-26 |  | 50% → 75% |  |
| 259 | 报告收费（处理） | 2015-10-26 → 2015-09-11 (-45d) | 2015-10-26 → 2015-09-11 (-45d) |  | 0d → 32d |
| 260 | 报告收费（修删查） | 2015-10-26 → 2015-09-11 (-45d) | 2015-10-26 → 2015-09-11 (-45d) |  | 0d → 32d |
| 261 | 报告收费（延期） | 2015-10-26 → 2015-09-11 (-45d) | 2015-10-26 → 2015-09-11 (-45d) |  | 0d → 32d |
| 262 | **成本管理** |  | 2015-10-27 A | 67% → 100% |  |
| 265 | 成本管理（导入导出） | 2015-10-27 A | 2015-10-27 A | 0% → 100% | 0d → none |
| 266 | **员工福利管理** |  | 2015-10-27 A | 67% → 100% |  |
| 269 | 员工福利管理（导入导出） | 2015-10-27 A | 2015-10-27 A | 0% → 100% | 0d → none |

| ID | Task | Start | Finish | Duration | Complete | Total float | Other |
| --- | --- | --- | --- | --- | --- | --- | --- |
| 270 | **科室收入管理** | 2015-10-28 A → 2015-10-28 | 2015-10-28 A |  | 67% → 100% |  |  |
| 271 | 科室收入管理（增删改查） | 2015-10-28 A → 2015-09-11 A (-47d) | 2015-10-28 A → 2015-09-11 A (-47d) |  |  |  |  |
| 272 | 科室收入明细管理（增删改查） | 2015-10-28 A → 2015-09-11 A (-47d) | 2015-10-28 A → 2015-09-11 A (-47d) |  |  |  |  |
| 273 | 科室收入管理（导入导出） | 2015-10-28 → 2015-09-11 A (-47d) | 2015-10-28 → 2015-09-11 A (-47d) |  | 0% → 100% | 0d → none |  |
| 276 | **收发文管理开发** | 2015-11-03 A |  |  | 0% → 95% |  | resources none → 梁凯迪 |
| 277 | 发文（增删改查） | 2015-11-03 A |  |  | 0% → 95% |  | resources none → 梁凯迪 |
| 278 | 收文（删改查） | 2015-11-03 A |  |  | 0% → 95% |  | resources none → 梁凯迪 |
| 279 | **人事管理开发** |  |  |  | 55% → 95% |  |  |
| 286 | **薪资管理** |  | 2015-11-06 A |  | 50% → 100% |  |  |
| 288 | 薪资管理（导入导出） | 2015-11-06 A | 2015-11-06 A |  | 0% → 100% | 0d → none |  |
| 289 | **人员管理** | 2015-11-04 A |  |  | 0% → 80% |  | resources 王勇 → 刘松 |
| 290 | 人员管理（增删改查） | 2015-11-04 A | 2015-11-04 A |  | 0% → 100% | 0d → none | resources 王勇 → 刘松 |
| 291 | 人员角色分配 | 2015-11-04 A |  |  | 0% → 70% |  | resources 王勇 → 刘松 |
| 292 | 人员管理（导入导出） | 2015-11-04 A |  |  | 0% → 70% |  | resources 王勇 → 刘松 |
| 293 | **培训考核记录** |  | 2015-11-06 A |  | 50% → 100% |  |  |
| 295 | 培训考核记录（导入导出） | 2015-11-06 A | 2015-11-06 A |  | 0% → 100% | 0d → none |  |
| 296 | **科研管理开发** |  | 2015-11-09 A |  | 50% → 100% |  |  |
| 297 | **信息管理** |  | 2015-11-09 A |  | 50% → 100% | 0d → none |  |
| 299 | 信息管理（导入导出） | 2015-11-09 A | 2015-11-09 A |  | 0% → 100% | 0d → none |  |
| 300 | **经费管理** |  | 2015-11-09 A |  | 50% → 100% | 0d → none |  |
| 302 | 经费管理（导入导出） | 2015-11-09 A | 2015-11-09 A |  | 0% → 100% | 0d → none |  |
| 303 | **成果管理** |  | 2015-11-09 A |  | 50% → 100% | 0d → none |  |
| 305 | 成果管理（导入导出） | 2015-11-09 A | 2015-11-09 A |  | 0% → 100% | 0d → none |  |
| 316 | **系统管理开发** | 2015-11-12 → 2015-11-11 A (-1d) |  | 2d → 3d | 0% → 91% |  | resources none → 刘健森 |
| 317 | **组织机构管理** | 2015-11-12 A | 2015-11-12 A |  | 0% → 100% |  | resources none → 刘健森 |
| 318 | 组织机构管理（增删改查） | 2015-11-12 A | 2015-11-12 A |  | 0% → 100% | 0d → none | resources none → 刘健森 |
| 319 | 组织机构管理（导入导出） | 2015-11-12 A | 2015-11-12 A |  | 0% → 100% | 100d → none | resources none → 刘健森 |
| 320 | **角色管理** | 2015-11-12 A | 2015-11-12 A |  | 0% → 100% |  | resources none → 刘健森 |
| 321 | 角色管理（增删改查） | 2015-11-12 A | 2015-11-12 A |  | 0% → 100% | 0d → none | resources none → 刘健森 |
| 322 | 角色管理（导入导出） | 2015-11-12 A | 2015-11-12 A |  | 0% → 100% | 100d → none | resources none → 刘健森 |
| 323 | **权限管理** | 2015-11-13 A | 2015-11-13 A |  | 0% → 100% |  | resources none → 刘健森 |
| 324 | 权限管理（增删改查） | 2015-11-13 A | 2015-11-13 A |  | 0% → 100% | 0d → none | resources none → 刘健森 |
| 325 | 权限管理（导入导出） | 2015-11-13 A | 2015-11-13 A |  | 0% → 100% | 0d → none | resources none → 刘健森 |
| 326 | **数据字典管理** | 2015-11-13 A | 2015-11-13 A |  | 0% → 100% |  | resources none → 刘健森 |
| 327 | 数据字典管理（增删改查） | 2015-11-13 A | 2015-11-13 A |  | 0% → 100% | 0d → none | resources none → 刘健森 |
| 328 | 数据字典管理（导入导出） | 2015-11-13 A | 2015-11-13 A |  | 0% → 100% | 0d → none | resources none → 刘健森 |
| 329 | **时效考核管理** | 2015-11-13 A |  |  | 0% → 60% |  | resources none → 段佩君 |
| 330 | 时效考核管理（增删改查） | 2015-11-13 A |  |  | 0% → 60% |  | resources none → 段佩君 |
| 331 | 时效考核管理（导入导出） | 2015-11-13 A |  |  | 0% → 60% |  | resources none → 段佩君 |
| 332 | **系统菜单管理** | 2015-11-11 A | 2015-11-13 A |  | 0% → 100% |  | resources none → 张益 |
| 333 | 系统菜单（增删改查） | 2015-11-11 A | 2015-11-12 A |  | 0% → 100% | 100d → none | resources none → 张益 |
| 334 | 系统菜单（导入导出） | 2015-11-13 A | 2015-11-13 A |  | 0% → 100% | 99d → none | resources none → 张益 |
| 335 | **日志管理** | 2015-11-13 A | 2015-11-13 A |  | 0% → 100% |  | resources none → 刘健森 |
| 336 | 日志管理（删查） | 2015-11-13 A | 2015-11-13 A |  | 0% → 100% | 0d → none | resources none → 刘健森 |
| 337 | 日志管理（导出） | 2015-11-13 A | 2015-11-13 A |  | 0% → 100% | 0d → none | resources none → 刘健森 |
| 338 | **个人资料** | 2015-11-12 A | 2015-11-12 A |  | 0% → 100% |  | resources none → 刘健森 |
| 339 | 资料修改 | 2015-11-12 A | 2015-11-12 A |  | 0% → 100% | 0d → none | resources none → 刘健森 |
| 340 | 天气预报 | 2015-11-12 → 2015-11-11 (-1d) | 2015-11-12 → 2015-11-11 (-1d) |  |  | 1d → 2d |  |
| 341 | 系统登录 | 2015-11-12 → 2015-11-11 A (-1d) | 2015-11-13 → 2015-11-12 A (-1d) |  | 0% → 100% | 0d → none | resources none → 刘健森 |
| 342 | 修改密码 | 2015-11-13 A | 2015-11-13 A |  | 0% → 100% | 99d → none | resources none → 刘健森 |
| 343 | **流程管理开发** |  |  |  | 57% → 67% |  |  |
| 344 | 流程设置 |  |  |  | 70% → 75% |  |  |
| 345 | 流程信息（增删改查） |  |  |  | 70% → 75% |  |  |
| 347 | 流程记录 |  |  |  | 50% → 75% |  |  |
